# 9230-사업일정관리(WBS)-v1.0(20180611)

Schedule from MS Project, 2018-05-29 to 2018-11-30, status date 2018-10-15, A marks actual dates.

## Calendars

- 표준: Mon-Fri 08:00-12:00, 13:00-17:00; Sat-Sun off.

## Resources

| Resource |
| --- |
| 신창권 |
| 김지암 |
| 김영모 |
| 권혁진 |
| 조성연 |
| 정재우 |
| 권지성 |
| 고춘화 |
| 이성규 |
| 이수진 |

## Schedule

| ID | WBS | Task | Type | Duration | Start | Finish | Complete | Remaining | Baseline start | Baseline finish | Baseline duration | Baseline 1 start | Baseline 1 finish | Total slack | Constraint | 완료기순지연일수 | 시작 일자 | 계획완료율 | 진행상황 |
| --- | --- | --- | --- | --- | --- | --- | --- | --- | --- | --- | --- | --- | --- | --- | --- | --- | --- | --- | --- |
| 1 | 1 | **저작권기술 성능평가 시스템 기능개선 및 운영** |  | 134d | 2018-05-29 A | 2018-11-30 | 88% | 15.55d | 2018-05-29 | 2018-11-30 | 134d | 2017-05-15 | 2017-12-01 |  |  | 100일 지연 |  |  |  |
| 2 | 1.1 | **PMO** |  | 125d? | 2018-06-11 A | 2018-11-30 | 83% | 21.4d? | 2018-06-11 | 2018-11-30 | 125d? | 2017-05-15 | 2017-11-30 | 0d |  | 미지연 | 지연 | 100% | 지연 |
| 3 | 1.1.1 | **주간업무보고** |  | 121d | 2018-06-11 A | 2018-11-26 | 96% | 4.84d | 2018-06-11 | 2018-11-26 | 121d |  |  | 0d |  |  | 지연 | 100% | 지연 |
| 4 | 1.1.1.1 | 주간업무보고 1 | manual | 1d | 2018-06-11 A | 2018-06-11 A | 100% |  | 2018-06-11 | 2018-06-11 | 1d |  |  |  | start no earlier than 2018-06-11 | 미지연 | 완료 | 100% | 완료 |
| 5 | 1.1.1.2 | 주간업무보고 2 | manual | 1d | 2018-06-18 A | 2018-06-18 A | 100% |  | 2018-06-18 | 2018-06-18 | 1d |  |  |  | start no earlier than 2018-06-18 | 미지연 | 완료 | 100% | 완료 |
| 6 | 1.1.1.3 | 주간업무보고 3 | manual | 1d | 2018-06-25 A | 2018-06-25 A | 100% |  | 2018-06-25 | 2018-06-25 | 1d |  |  |  | start no earlier than 2018-06-25 | 미지연 | 완료 | 100% | 완료 |
| 7 | 1.1.1.4 | 주간업무보고 4 | manual | 1d | 2018-07-04 A | 2018-07-04 A | 100% |  | 2018-07-04 | 2018-07-04 | 1d |  |  |  | start no earlier than 2018-07-02 | 미지연 | 완료 | 100% | 완료 |
| 8 | 1.1.1.5 | 주간업무보고 5 | manual | 1d | 2018-07-10 A | 2018-07-10 A | 100% |  | 2018-07-10 | 2018-07-10 | 1d |  |  |  | start no earlier than 2018-07-09 | 미지연 | 완료 | 100% | 완료 |
| 9 | 1.1.1.6 | 주간업무보고 6 | manual | 1d | 2018-07-17 A | 2018-07-17 A | 100% |  | 2018-07-17 | 2018-07-17 | 1d |  |  |  | start no earlier than 2018-07-16 | 미지연 | 완료 | 100% | 완료 |
| 10 | 1.1.1.7 | 주간업무보고 7 | manual | 1d | 2018-07-25 A | 2018-07-25 A | 100% |  | 2018-07-25 | 2018-07-25 | 1d |  |  |  | start no earlier than 2018-07-23 | 미지연 | 완료 | 100% | 완료 |
| 11 | 1.1.1.8 | 주간업무보고 8 | manual | 1d | 2018-07-30 A | 2018-07-30 A | 100% |  | 2018-07-30 | 2018-07-30 | 1d |  |  |  | start no earlier than 2018-07-30 | 미지연 | 완료 | 100% | 완료 |
| 12 | 1.1.1.9 | 주간업무보고 9 | manual | 1d | 2018-08-07 A | 2018-08-07 A | 100% |  | 2018-08-07 | 2018-08-07 | 1d |  |  |  | start no earlier than 2018-08-06 | 미지연 | 완료 | 100% | 완료 |
| 13 | 1.1.1.10 | 주간업무보고 10 | manual | 1d | 2018-08-14 A | 2018-08-14 A | 100% |  | 2018-08-14 | 2018-08-14 | 1d |  |  |  | start no earlier than 2018-08-13 | 미지연 | 완료 | 100% | 완료 |
| 14 | 1.1.1.11 | 주간업무보고 11 | manual | 1d | 2018-08-21 A | 2018-08-21 A | 100% |  | 2018-08-21 | 2018-08-21 | 1d |  |  |  | start no earlier than 2018-08-20 | 미지연 | 완료 | 100% | 완료 |
| 15 | 1.1.1.12 | 주간업무보고 12 | manual | 1d | 2018-08-28 A | 2018-08-28 A | 100% |  | 2018-08-28 | 2018-08-28 | 1d |  |  |  | start no earlier than 2018-08-27 | 미지연 | 완료 | 100% | 완료 |
| 16 | 1.1.1.13 | 주간업무보고 13 | manual | 1d | 2018-09-03 A | 2018-09-03 A | 100% |  | 2018-09-03 | 2018-09-03 | 1d |  |  |  | start no earlier than 2018-09-03 | 미지연 | 완료 | 100% | 완료 |
| 17 | 1.1.1.14 | 주간업무보고 14 | manual | 1d | 2018-09-10 A | 2018-09-10 A | 100% |  | 2018-09-10 | 2018-09-10 | 1d |  |  |  | start no earlier than 2018-09-10 | 미지연 | 완료 | 100% | 완료 |
| 18 | 1.1.1.15 | 주간업무보고 15 | manual | 1d | 2018-09-17 A | 2018-09-17 A | 100% |  | 2018-09-17 | 2018-09-17 | 1d |  |  |  | start no earlier than 2018-09-17 | 미지연 | 완료 | 100% | 완료 |
| 19 | 1.1.1.16 | 주간업무보고 16 | manual | 1d | 2018-09-28 A | 2018-09-28 A | 100% |  | 2018-09-28 | 2018-09-28 | 1d |  |  |  | start no earlier than 2018-09-24 | 미지연 | 완료 | 100% | 완료 |
| 20 | 1.1.1.17 | 주간업무보고 17 | manual | 1d | 2018-10-02 A | 2018-10-02 A | 100% |  | 2018-10-02 | 2018-10-02 | 1d |  |  |  | start no earlier than 2018-10-01 | 미지연 | 완료 | 100% | 완료 |
| 21 | 1.1.1.18 | 주간업무보고 18 | manual | 1d | 2018-10-10 A | 2018-10-10 A | 100% |  | 2018-10-10 | 2018-10-10 | 1d |  |  |  | start no earlier than 2018-10-08 | 미지연 | 완료 | 100% | 완료 |
| 22 | 1.1.1.19 | 주간업무보고 19 | manual | 1d | 2018-10-16 A | 2018-10-16 A | 100% |  | 2018-10-16 | 2018-10-16 | 1d |  |  |  | start no earlier than 2018-10-15 | 미지연 | 완료 | 100% | 완료 |
| 23 | 1.1.1.20 | 주간업무보고 20 | manual | 1d | 2018-10-24 A | 2018-10-24 A | 100% |  | 2018-10-24 | 2018-10-24 | 1d |  |  |  | start no earlier than 2018-10-22 | 미지연 | 완료 | 100% | 완료 |
| 24 | 1.1.1.21 | 주간업무보고 21 | manual | 1d | 2018-10-30 A | 2018-10-30 A | 100% |  | 2018-10-30 | 2018-10-30 | 1d |  |  |  | start no earlier than 2018-10-29 | 미지연 | 완료 | 100% | 완료 |
| 25 | 1.1.1.22 | 주간업무보고 22 | manual | 1d | 2018-11-06 A | 2018-11-06 A | 100% |  | 2018-11-06 | 2018-11-06 | 1d |  |  |  | start no earlier than 2018-11-05 | 미지연 | 완료 | 100% | 완료 |
| 26 | 1.1.1.23 | 주간업무보고 23 | manual | 1d | 2018-11-13 A | 2018-11-13 A | 100% |  | 2018-11-13 | 2018-11-13 | 1d |  |  |  | start no earlier than 2018-11-12 | 미지연 | 완료 | 100% | 완료 |
| 27 | 1.1.1.24 | 주간업무보고 24 | manual | 1d | 2018-11-20 A | 2018-11-20 A | 100% |  | 2018-11-20 | 2018-11-20 | 1d |  |  |  | start no earlier than 2018-11-19 | 미지연 | 완료 | 100% | 완료 |
| 28 | 1.1.1.25 | 주간업무보고 25 | manual | 1d | 2018-11-26 | 2018-11-26 |  |  | 2018-11-26 | 2018-11-26 | 1d |  |  |  | start no earlier than 2018-11-26 | 85일 지연 | 지연 | 100% | 지연 |

| ID | WBS | Task | Type | Duration | Start | Finish | Complete | Remaining | Baseline start | Baseline finish | Baseline duration | Baseline 1 start | Baseline 1 finish | Total slack | Constraint | 시작 일자 | 계획완료율 | 진행상황 | 완료기순지연일수 |
| --- | --- | --- | --- | --- | --- | --- | --- | --- | --- | --- | --- | --- | --- | --- | --- | --- | --- | --- | --- |
| 29 | 1.1.2 | **월간업무보고** |  | 111d | 2018-06-26 A | 2018-11-27 | 83% | 18.5d | 2018-06-26 | 2018-11-27 | 111d |  |  | 0d |  | 지연 | 100% | 지연 |  |
| 30 | 1.1.2.1 | 월간업무보고 1 | manual | 1d | 2018-06-26 A | 2018-06-26 A | 100% |  | 2018-06-26 | 2018-06-26 | 1d |  |  |  | start no earlier than 2018-06-26 | 완료 | 100% | 완료 | 미지연 |
| 31 | 1.1.2.2 | 월간업무보고 2 | manual | 1d | 2018-07-25 A | 2018-07-25 A | 100% |  | 2018-07-25 | 2018-07-25 | 1d |  |  |  | start no earlier than 2018-07-31 | 완료 | 100% | 완료 | 미지연 |
| 32 | 1.1.2.3 | 월간업무보고 3 | manual | 1d | 2018-09-03 A | 2018-09-03 A | 100% |  | 2018-09-03 | 2018-09-03 | 1d |  |  |  | start no earlier than 2018-08-28 | 완료 | 100% | 완료 | 미지연 |
| 33 | 1.1.2.4 | 월간업무보고 4 | manual | 1d | 2018-09-17 A | 2018-09-17 A | 100% |  | 2018-09-17 | 2018-09-17 | 1d |  |  |  | start no earlier than 2018-09-25 | 완료 | 100% | 완료 | 미지연 |
| 34 | 1.1.2.5 | 월간업무보고 5 | manual | 1d | 2018-10-30 A | 2018-10-30 A | 100% |  | 2018-10-30 | 2018-10-30 | 1d |  |  |  | start no earlier than 2018-10-30 | 완료 | 100% | 완료 | 미지연 |
| 35 | 1.1.2.6 | 월간업무보고 6 | manual | 1d | 2018-11-27 | 2018-11-27 |  |  | 2018-11-27 | 2018-11-27 | 1d |  |  |  | start no earlier than 2018-11-27 | 지연 | 100% | 지연 | 84일 지연 |
| 36 | 1.1.3 | **교육** |  | 110d? | 2018-07-02 A | 2018-11-30 | 38% | 68.75d? | 2018-07-02 | 2018-11-30 | 110d? | 2017-05-15 | 2017-10-27 | 0d |  | 지연 | 100% | 지연 | 미지연 |
| 37 | 1.1.3.1 | 사업설명 교육 | manual | 1d | 2018-07-02 A | 2018-07-02 A | 100% |  | 2018-07-02 | 2018-07-02 | 1d | 2017-05-15 | 2017-05-15 |  |  | 완료 | 100% | 완료 | 미지연 |
| 38 | 1.1.3.2 | 품질관리 교육 | manual | 1d | 2018-07-02 A | 2018-07-02 A | 100% |  | 2018-07-02 | 2018-07-02 | 1d | 2017-05-15 | 2017-05-15 |  |  | 완료 | 100% | 완료 | 미지연 |
| 39 | 1.1.3.3 | 보안교육(소프트웨어 개발 보안) | manual | 1d? | 2018-07-27 A | 2018-07-27 A | 100% |  | 2018-07-27 | 2018-07-27 | 1d? | 2017-06-29 | 2017-06-29 |  |  | 완료 | 100% | 완료 | 미지연 |
| 40 | 1.1.3.4 | 보안교육(개인정보 보호) | manual | 1d | 2018-08-31 A | 2018-08-31 A | 100% |  | 2018-08-31 | 2018-08-31 | 1d | 2017-07-28 | 2017-07-28 |  |  | 완료 | 100% | 완료 | 미지연 |
| 41 | 1.1.3.5 | 보안교육(공공기관 개인 정보 관리) | manual | 1d | 2018-10-05 A | 2018-10-05 A | 100% |  | 2018-10-05 | 2018-10-05 | 1d | 2017-08-25 | 2017-08-25 |  |  | 완료 | 100% | 완료 | 미지연 |
| 42 | 1.1.3.6 | 보안교육(스스로 지키는 개인정보 보호) | manual | 1d | 2018-11-08 A | 2018-11-08 A | 100% |  | 2018-11-08 | 2018-11-08 | 1d | 2017-09-29 | 2017-09-29 |  |  | 완료 | 100% | 완료 | 미지연 |
| 43 | 1.1.3.7 | 사용자 교육 | manual | 10d | 2018-11-19 | 2018-11-30 |  |  | 2018-11-19 | 2018-11-30 | 10d | 2017-10-27 | 2017-10-27 |  |  | 지연 | 100% | 지연 | 81일 지연 |
| 44 | 1.1.4 | **테스트** |  | 102d | 2018-07-05 A | 2018-11-23 | 89% | 11.33d | 2018-07-05 | 2018-11-23 | 102d | 2017-10-30 | 2017-11-30 | 5d |  | 지연 | 100% | 지연 | 미지연 |
| 45 | 1.1.4.1 | 단위테스트 시나리오 작성 |  | 25d | 2018-07-05 A | 2018-08-10 A | 100% |  | 2018-07-05 | 2018-08-10 | 25d | 2017-10-30 | 2017-11-10 |  | finish no earlier than 2018-07-13 | 완료 | 100% | 완료 | 미지연 |
| 46 | 1.1.4.2 | 통합테스트 시나리오 작성 |  | 5d | 2018-11-12 A | 2018-11-16 A | 100% |  | 2018-11-12 | 2018-11-16 | 5d | 2017-10-30 | 2017-11-10 |  | finish no earlier than 2018-07-20 | 완료 | 100% | 완료 | 미지연 |
| 47 | 1.1.4.3 | 성능테스트 |  | 5d | 2018-11-12 A | 2018-11-16 A | 100% |  | 2018-11-12 | 2018-11-16 | 5d | 2017-10-30 | 2017-11-10 |  | finish no earlier than 2018-11-02 | 완료 | 100% | 완료 | 미지연 |
| 48 | 1.1.4.4 | 웹접근성 검사 |  | 5d | 2018-11-12 A | 2018-11-16 A | 100% |  | 2018-11-12 | 2018-11-16 | 5d |  |  |  | finish no earlier than 2018-11-02 | 완료 | 100% | 완료 | 미지연 |
| 49 | 1.1.4.5 | 인수인계테스트 |  | 5d | 2018-11-19 | 2018-11-23 |  |  | 2018-11-19 | 2018-11-23 | 5d | 2017-11-13 | 2017-11-30 | 5d | finish no earlier than 2018-11-23 | 지연 | 100% | 지연 | 86일 지연 |
| 50 | 1.1.5 | **품질보증 활동** |  | 100d | 2018-07-02 A | 2018-11-16 A | 100% |  | 2018-07-02 | 2018-11-16 | 100d |  |  |  |  | 완료 | 100% | 완료 | 미지연 |
| 51 | 1.1.5.1 | 분석단계 품질 관리 활동 | manual | 5d | 2018-07-02 A | 2018-07-06 A | 100% |  | 2018-07-02 | 2018-07-06 | 5d |  |  |  |  | 완료 | 100% | 완료 | 미지연 |
| 52 | 1.1.5.2 | 설계 단계 품질 관리 활동 | manual | 1d | 2018-07-26 A | 2018-07-26 A | 100% |  | 2018-07-26 | 2018-07-26 | 1d |  |  |  |  | 완료 | 100% | 완료 | 미지연 |
| 53 | 1.1.5.3 | 구현 단계 품질 관리 활동 | manual | 5d | 2018-11-12 A | 2018-11-16 A | 100% |  | 2018-11-12 | 2018-11-16 | 5d |  |  |  |  | 완료 | 100% | 완료 | 미지연 |

| ID | WBS | Task | Type | Duration | Start | Finish | Complete | Remaining | Baseline start | Baseline finish | Baseline duration | Baseline 1 start | Baseline 1 finish | Total slack | 시작 일자 | 계획완료율 | 진행상황 | 완료기순지연일수 |
| --- | --- | --- | --- | --- | --- | --- | --- | --- | --- | --- | --- | --- | --- | --- | --- | --- | --- | --- |
| 54 | 1.1.6 | **이관** |  | 13d | 2018-11-12 A | 2018-11-28 A | 100% |  | 2018-11-12 | 2018-11-28 | 13d |  |  |  | 완료 | 100% | 완료 | 미지연 |
| 55 | 1.1.6.1 | 데이터 이관 | manual | 13d | 2018-11-12 A | 2018-11-28 A | 100% |  | 2018-11-12 | 2018-11-28 | 13d |  |  |  | 완료 | 100% | 완료 | 미지연 |
| 56 | 1.1.6.2 | 시스템 전환 | manual | 10d | 2018-11-12 A | 2018-11-23 A | 100% |  | 2018-11-12 | 2018-11-23 | 10d |  |  |  | 완료 | 100% | 완료 | 미지연 |
| 57 | 1.1.7 | **감리** |  | 40d | 2018-09-17 A | 2018-11-09 A | 100% |  | 2018-09-17 | 2018-11-09 | 40d |  |  |  | 완료 | 100% | 완료 | 미지연 |
| 58 | 1.1.7.1 | 설계단계 감리 | manual | 5d | 2018-09-17 A | 2018-09-21 A | 100% |  | 2018-09-17 | 2018-09-21 | 5d |  |  |  | 완료 | 100% | 완료 | 미지연 |
| 59 | 1.1.7.2 | 최종 감리 | manual | 5d | 2018-11-05 A | 2018-11-09 A | 100% |  | 2018-11-05 | 2018-11-09 | 5d |  |  |  | 완료 | 100% | 완료 | 미지연 |
| 60 | 1.1.8 | 취약점 점검 |  | 14d | 2018-11-05 A | 2018-11-22 | 38% | 8.68d | 2018-11-05 | 2018-11-22 | 14d |  |  | 6d | 지연 | 100% | 지연 | 87일 지연 |
| 61 | 1.2 | **데이타셋 구축** |  | 95d | 2018-07-09 A | 2018-11-18 A | 100% |  | 2018-07-09 | 2018-11-18 | 95d | 2017-06-26 | 2017-10-13 |  | 완료 | 100% | 완료 | 미지연 |
| 62 | 1.2.1 | **비디오 데이타셋 구축** |  | 65d | 2018-07-10 A | 2018-10-08 A | 100% |  | 2018-07-10 | 2018-10-08 | 65d | 2017-06-26 | 2017-10-13 |  | 완료 | 100% | 완료 | 미지연 |
| 63 | 1.2.1.1 | **비디오 원본 데이타셋 구축** |  | 12d | 2018-07-10 A | 2018-07-25 A | 100% |  | 2018-07-10 | 2018-07-25 | 12d | 2017-06-26 | 2017-06-30 |  | 완료 | 100% | 완료 | 미지연 |
| 64 | 1.2.1.1.1 | 원본 콘텐츠 확보 | manual | 9d | 2018-07-10 A | 2018-07-20 A | 100% |  | 2018-07-10 | 2018-07-20 | 9d | 2017-06-26 | 2017-06-30 |  | 완료 | 100% | 완료 | 미지연 |
| 65 | 1.2.1.1.2 | 원본 데이타셋 검증 | manual | 6d | 2018-07-13 A | 2018-07-20 A | 100% |  | 2018-07-13 | 2018-07-20 | 6d | 2017-06-29 | 2017-06-30 |  | 완료 | 100% | 완료 | 미지연 |
| 66 | 1.2.1.1.3 | 3분 원본 및 DivX 변환 | manual | 5d | 2018-07-16 A | 2018-07-20 A | 100% |  | 2018-07-16 | 2018-07-20 | 5d | 2017-06-29 | 2017-06-30 |  | 완료 | 100% | 완료 | 미지연 |
| 67 | 1.2.1.1.4 | 원본 MP4 변환 | manual | 4d | 2018-07-20 A | 2018-07-25 A | 100% |  | 2018-07-20 | 2018-07-25 | 4d | 2017-09-25 | 2017-10-06 |  | 완료 | 100% | 완료 | 미지연 |
| 68 | 1.2.1.2 | **비디오 변형 데이타셋 구축** |  | 29d | 2018-07-16 A | 2018-08-23 A | 100% |  | 2018-07-16 | 2018-08-23 | 29d | 2017-07-03 | 2017-09-22 |  | 완료 | 100% | 완료 | 미지연 |
| 69 | 1.2.1.2.1 | 강인성 변형물 구축 | manual | 29d | 2018-07-16 A | 2018-08-23 A | 100% |  | 2018-07-16 | 2018-08-23 | 29d | 2017-07-03 | 2017-07-21 |  | 완료 | 100% | 완료 | 미지연 |
| 70 | 1.2.1.2.2 | 인식정보량 변형물 구축 | manual | 4d | 2018-08-20 A | 2018-08-23 A | 100% |  | 2018-08-20 | 2018-08-23 | 4d | 2017-08-14 | 2017-09-22 |  | 완료 | 100% | 완료 | 미지연 |
| 71 | 1.2.1.2.3 | 강인성 변형물 구축 (오디오제거) | manual | 21d | 2018-07-26 A | 2018-08-23 A | 100% |  | 2018-07-26 | 2018-08-23 | 21d | 2017-07-03 | 2017-07-21 |  | 완료 | 100% | 완료 | 미지연 |
| 72 | 1.2.1.3 | **모바일웹하드용 비디오 변형 데이타셋 구축** |  | 38d | 2018-08-16 A | 2018-10-08 A | 100% |  | 2018-08-16 | 2018-10-08 | 38d | 2017-09-25 | 2017-10-13 |  | 완료 | 100% | 완료 | 미지연 |
| 73 | 1.2.1.3.1 | 강인성 변형물 구축 | manual | 26d | 2018-08-24 A | 2018-09-28 A | 100% |  | 2018-08-24 | 2018-09-28 | 26d | 2017-09-25 | 2017-10-06 |  | 완료 | 100% | 완료 | 미지연 |
| 74 | 1.2.1.3.2 | 인식정보량 변형물 구축 | manual | 3d | 2018-08-16 A | 2018-08-20 A | 100% |  | 2018-08-16 | 2018-08-20 | 3d | 2017-10-09 | 2017-10-13 |  | 완료 | 100% | 완료 | 미지연 |
| 75 | 1.2.1.3.3 | 강인성 변형물 구축 (오디오제거) | manual | 32d | 2018-08-24 A | 2018-10-08 A | 100% |  | 2018-08-24 | 2018-10-08 | 32d | 2017-07-03 | 2017-07-21 |  | 완료 | 100% | 완료 | 미지연 |
| 76 | 1.2.2 | **오디오 데이타셋 구축** |  | 95d | 2018-07-09 A | 2018-11-18 A | 100% |  | 2018-07-09 | 2018-11-18 | 95d | 2017-06-26 | 2017-07-28 |  | 완료 | 100% | 완료 | 미지연 |
| 77 | 1.2.2.1 | **오디오 원본 데이타셋 구축** |  | 5d | 2018-07-09 A | 2018-07-13 A | 100% |  | 2018-07-09 | 2018-07-13 | 5d | 2017-06-26 | 2017-06-30 |  | 완료 | 100% | 완료 | 미지연 |
| 78 | 1.2.2.1.1 | 원본 콘텐츠 확보 | manual | 5d | 2018-07-09 A | 2018-07-13 A | 100% |  | 2018-07-09 | 2018-07-13 | 5d | 2017-06-26 | 2017-06-30 |  | 완료 | 100% | 완료 | 미지연 |
| 79 | 1.2.2.1.2 | 원본 데이타셋 검증 | manual | 1d | 2018-07-13 A | 2018-07-13 A | 100% |  | 2018-07-13 | 2018-07-13 | 1d | 2017-06-29 | 2017-06-30 |  | 완료 | 100% | 완료 | 미지연 |

| ID | WBS | Task | Type | Duration | Start | Finish | Complete | Baseline start | Baseline finish | Baseline duration | Baseline 1 start | Baseline 1 finish | Total slack | 시작 일자 | 계획완료율 | 진행상황 | 완료기순지연일수 |
| --- | --- | --- | --- | --- | --- | --- | --- | --- | --- | --- | --- | --- | --- | --- | --- | --- | --- |
| 80 | 1.2.2.2 | **오디오 변형 데이타셋 구축** |  | 90d | 2018-07-16 A | 2018-11-18 A | 100% | 2018-07-16 | 2018-11-18 | 90d | 2017-07-03 | 2017-07-28 |  | 완료 | 100% | 완료 | 미지연 |
| 81 | 1.2.2.2.1 | 강인성 변형물 구축 | manual | 91d | 2018-07-16 A | 2018-11-18 A | 100% | 2018-07-16 | 2018-11-18 | 91d | 2017-07-03 | 2017-07-14 |  | 완료 | 100% | 완료 | 미지연 |
| 82 | 1.2.2.2.2 | 인식정보량 변형물 구축 | manual | 3d | 2018-07-23 A | 2018-07-25 A | 100% | 2018-07-23 | 2018-07-25 | 3d | 2017-07-17 | 2017-07-28 |  | 완료 | 100% | 완료 | 미지연 |
| 86 | 1.3 | **시스템 기능 개선 및 운영** |  | 1d? | 2018-05-29 | 2018-05-29 |  |  |  |  |  |  | 0d | 이후작업 | 0% | 이후작업 | 미지연 |
| 87 | 1.3.1 | **특징기반 필터링 기술 성능평가 개선** |  | 1d? | 2018-05-29 | 2018-05-29 |  |  |  |  |  |  | 0d | 이후작업 | 0% | 이후작업 | 미지연 |
| 88 | 1.3.1.1 | 평가 항목 개선 | manual | 1d? | 2018-05-29 | 2018-05-29 |  |  |  |  |  |  |  | 이후작업 | 0% | 이후작업 | 미지연 |
| 89 | 1.3.1.2 | 변형물 자동 생성 도구 개선 | manual | 1d? | 2018-05-29 | 2018-05-29 |  |  |  |  |  |  |  | 이후작업 | 0% | 이후작업 | 미지연 |
| 90 | 1.3.2 | **워터마크/포렌식마크 성능평가** |  | 1d? | 2018-05-29 | 2018-05-29 |  |  |  |  |  |  | 0d | 이후작업 | 0% | 이후작업 | 미지연 |
| 91 | 1.3.2.1 | TTA 평가 항목 개발 | manual | 1d? | 2018-05-29 | 2018-05-29 |  |  |  |  |  |  |  | 이후작업 | 0% | 이후작업 | 미지연 |
| 92 | 1.3.3 | **시스템 연계 및 UI 개선** |  | 1d? | 2018-05-29 | 2018-05-29 |  |  |  |  |  |  | 0d | 이후작업 | 0% | 이후작업 | 미지연 |
| 93 | 1.3.3.1 | 회원정보 연계 개선 | manual | 1d? | 2018-05-29 | 2018-05-29 |  |  |  |  |  |  |  | 이후작업 | 0% | 이후작업 | 미지연 |
| 94 | 1.3.3.2 | 수요조사 화면 이관 | manual | 1d? | 2018-05-29 | 2018-05-29 |  |  |  |  |  |  |  | 이후작업 | 0% | 이후작업 | 미지연 |
| 95 | 1.4 | **장비도입** |  | 1d? | 2018-05-29 | 2018-05-29 |  |  |  |  |  |  | 0d | 이후작업 | 0% | 이후작업 | 미지연 |
| 96 | 1.4.1 | 장비납품 | manual | 1d? | 2018-05-29 | 2018-05-29 |  |  |  |  |  |  |  | 이후작업 | 0% | 이후작업 | 미지연 |
| 97 | 1.4.2 | 성능평가 관련 S/W 설치 | manual | 1d? | 2018-05-29 | 2018-05-29 |  |  |  |  |  |  |  | 이후작업 | 0% | 이후작업 | 미지연 |
| 98 | 1.4.3 | 기존 자료 이관 | manual | 1d? | 2018-05-29 | 2018-05-29 |  |  |  |  |  |  |  | 이후작업 | 0% | 이후작업 | 미지연 |
| 99 | 1.5 | **운용 환경 전환** |  | 1d? | 2018-05-29 | 2018-05-29 |  |  |  |  |  |  | 0d | 이후작업 | 0% | 이후작업 | 미지연 |
| 100 | 1.5.1 | OS 신규 설치 | manual | 1d? | 2018-05-29 | 2018-05-29 |  |  |  |  |  |  |  | 이후작업 | 0% | 이후작업 | 미지연 |
| 101 | 1.5.2 | DB 이관 | manual | 1d? | 2018-05-29 | 2018-05-29 |  |  |  |  |  |  |  | 이후작업 | 0% | 이후작업 | 미지연 |
| 102 | 1.5.3 | 관련 프로그램 수정 | manual | 1d? | 2018-05-29 | 2018-05-29 |  |  |  |  |  |  |  | 이후작업 | 0% | 이후작업 | 미지연 |
| 103 | 1.5.4 | 수정 내역 검증 | manual | 1d? | 2018-05-29 | 2018-05-29 |  |  |  |  |  |  |  | 이후작업 | 0% | 이후작업 | 미지연 |
| 104 | 1.6 | **저작권기술 정보 제공 사이트 개발** |  | 1d? | 2018-05-29 | 2018-05-29 |  |  |  |  |  |  | 0d | 이후작업 | 0% | 이후작업 | 미지연 |
| 105 | 1.6.1 | **저작권기술 현황 관리** |  | 1d? | 2018-05-29 | 2018-05-29 |  |  |  |  |  |  | 0d | 이후작업 | 0% | 이후작업 | 미지연 |
| 106 | 1.6.1.1 | 사업자 정보 관리 | manual | 1d? | 2018-05-29 | 2018-05-29 |  |  |  |  |  |  |  | 이후작업 | 0% | 이후작업 | 미지연 |
| 107 | 1.6.1.2 | 제품 및 솔루션 정보 | manual | 1d? | 2018-05-29 | 2018-05-29 |  |  |  |  |  |  |  | 이후작업 | 0% | 이후작업 | 미지연 |
| 108 | 1.6.1.3 | 기술 유형 및 인증 정보 | manual | 1d? | 2018-05-29 | 2018-05-29 |  |  |  |  |  |  |  | 이후작업 | 0% | 이후작업 | 미지연 |
| 109 | 1.6.1.4 | 활용 사례/컨퍼런스 | manual | 1d? | 2018-05-29 | 2018-05-29 |  |  |  |  |  |  |  | 이후작업 | 0% | 이후작업 | 미지연 |

| ID | WBS | Task | Type | Duration | Start | Finish | Total slack | 시작 일자 | 계획완료율 | 진행상황 | 완료기순지연일수 |
| --- | --- | --- | --- | --- | --- | --- | --- | --- | --- | --- | --- |
| 110 | 1.6.2 | **저작권기술 정보 제공(누리집)** |  | 1d? | 2018-05-29 | 2018-05-29 | 0d | 이후작업 | 0% | 이후작업 | 미지연 |
| 111 | 1.6.2.1 | 사업자 정보 제공 | manual | 1d? | 2018-05-29 | 2018-05-29 |  | 이후작업 | 0% | 이후작업 | 미지연 |
| 112 | 1.6.2.2 | 제품 및 솔루션제공 | manual | 1d? | 2018-05-29 | 2018-05-29 |  | 이후작업 | 0% | 이후작업 | 미지연 |
| 113 | 1.6.2.3 | 기술 유형 및 인증 정보 제공 | manual | 1d? | 2018-05-29 | 2018-05-29 |  | 이후작업 | 0% | 이후작업 | 미지연 |
| 114 | 1.6.2.4 | 활용 사례/컨퍼런스 제공 | manual | 1d? | 2018-05-29 | 2018-05-29 |  | 이후작업 | 0% | 이후작업 | 미지연 |
| 115 | 1.6.3 | **홍보 영상 서비스 관리** |  | 1d? | 2018-05-29 | 2018-05-29 | 0d | 이후작업 | 0% | 이후작업 | 미지연 |
| 116 | 1.6.3.1 | 홍보 영상 서비스 관리 |  | 1d? | 2018-05-29 | 2018-05-29 | 133d | 이후작업 | 0% | 이후작업 | 미지연 |
| 117 | 1.6.3.2 | 홍보 영상 서비스 정보 제공 | manual | 1d | 2018-05-29 | 2018-05-29 |  | 이후작업 | 0% | 이후작업 | 미지연 |
