# 9230-사업일정관리(WBS)-v1.0(20180611)

Schedule from MS Project, 2018-05-29 to 2018-12-06, status date 2018-10-15, A marks actual dates.

## Calendars

- 표준: Mon-Fri 08:00-12:00, 13:00-17:00; Sat-Sun off.

## Resources

| Resource |
| --- |
| 신창권 |
| 김지암 |
| 김영모 |
| 권혁진 |
| 조성연 |
| 정재우 |
| 권지성 |
| 고춘화 |
| 이성규 |
| 이수진 |

## Schedule

| ID | WBS | Task | Type | Duration | Start | Finish | Complete | Remaining | Baseline start | Baseline finish | Baseline duration | Baseline 1 start | Baseline 1 finish | Total slack | Constraint | 시작 일자 | 계획완료율 | 진행상황 | 완료기순지연일수 |
| --- | --- | --- | --- | --- | --- | --- | --- | --- | --- | --- | --- | --- | --- | --- | --- | --- | --- | --- | --- |
| 1 | 1 | **저작권기술 성능평가 시스템 개선 및 고도화** |  | 134d | 2018-05-29 A | 2018-11-30 | 97% | 3.55d | 2018-05-29 | 2018-11-30 | 134d | 2017-05-15 | 2017-12-01 |  |  | 지연 | 98% | 지연 | 100일 지연 |
| 2 | 1.1 | **PMO** |  | 125d? | 2018-06-11 A | 2018-11-30 | 81% | 23.64d? | 2018-06-11 | 2018-11-30 | 125d? | 2017-05-15 | 2017-11-30 | 0d |  | 지연 | 93% | 지연 | 미지연 |
| 3 | 1.1.1 | **주간업무보고** |  | 121d | 2018-06-11 A | 2018-11-26 | 96% | 4.84d | 2018-06-11 | 2018-11-26 | 121d |  |  | 0d |  | 양호 | 96% | 양호 |  |
| 4 | 1.1.1.1 | 주간업무보고 1 | manual | 1d | 2018-06-11 A | 2018-06-11 A | 100% |  | 2018-06-11 | 2018-06-11 | 1d |  |  |  | start no earlier than 2018-06-11 | 완료 | 100% | 완료 | 미지연 |
| 5 | 1.1.1.2 | 주간업무보고 2 | manual | 1d | 2018-06-18 A | 2018-06-18 A | 100% |  | 2018-06-18 | 2018-06-18 | 1d |  |  |  | start no earlier than 2018-06-18 | 완료 | 100% | 완료 | 미지연 |
| 6 | 1.1.1.3 | 주간업무보고 3 | manual | 1d | 2018-06-25 A | 2018-06-25 A | 100% |  | 2018-06-25 | 2018-06-25 | 1d |  |  |  | start no earlier than 2018-06-25 | 완료 | 100% | 완료 | 미지연 |
| 7 | 1.1.1.4 | 주간업무보고 4 | manual | 1d | 2018-07-04 A | 2018-07-04 A | 100% |  | 2018-07-04 | 2018-07-04 | 1d |  |  |  | start no earlier than 2018-07-02 | 완료 | 100% | 완료 | 미지연 |
| 8 | 1.1.1.5 | 주간업무보고 5 | manual | 1d | 2018-07-10 A | 2018-07-10 A | 100% |  | 2018-07-10 | 2018-07-10 | 1d |  |  |  | start no earlier than 2018-07-09 | 완료 | 100% | 완료 | 미지연 |
| 9 | 1.1.1.6 | 주간업무보고 6 | manual | 1d | 2018-07-17 A | 2018-07-17 A | 100% |  | 2018-07-17 | 2018-07-17 | 1d |  |  |  | start no earlier than 2018-07-16 | 완료 | 100% | 완료 | 미지연 |
| 10 | 1.1.1.7 | 주간업무보고 7 | manual | 1d | 2018-07-25 A | 2018-07-25 A | 100% |  | 2018-07-25 | 2018-07-25 | 1d |  |  |  | start no earlier than 2018-07-23 | 완료 | 100% | 완료 | 미지연 |
| 11 | 1.1.1.8 | 주간업무보고 8 | manual | 1d | 2018-07-30 A | 2018-07-30 A | 100% |  | 2018-07-30 | 2018-07-30 | 1d |  |  |  | start no earlier than 2018-07-30 | 완료 | 100% | 완료 | 미지연 |
| 12 | 1.1.1.9 | 주간업무보고 9 | manual | 1d | 2018-08-07 A | 2018-08-07 A | 100% |  | 2018-08-07 | 2018-08-07 | 1d |  |  |  | start no earlier than 2018-08-06 | 완료 | 100% | 완료 | 미지연 |
| 13 | 1.1.1.10 | 주간업무보고 10 | manual | 1d | 2018-08-14 A | 2018-08-14 A | 100% |  | 2018-08-14 | 2018-08-14 | 1d |  |  |  | start no earlier than 2018-08-13 | 완료 | 100% | 완료 | 미지연 |
| 14 | 1.1.1.11 | 주간업무보고 11 | manual | 1d | 2018-08-21 A | 2018-08-21 A | 100% |  | 2018-08-21 | 2018-08-21 | 1d |  |  |  | start no earlier than 2018-08-20 | 완료 | 100% | 완료 | 미지연 |
| 15 | 1.1.1.12 | 주간업무보고 12 | manual | 1d | 2018-08-28 A | 2018-08-28 A | 100% |  | 2018-08-28 | 2018-08-28 | 1d |  |  |  | start no earlier than 2018-08-27 | 완료 | 100% | 완료 | 미지연 |
| 16 | 1.1.1.13 | 주간업무보고 13 | manual | 1d | 2018-09-03 A | 2018-09-03 A | 100% |  | 2018-09-03 | 2018-09-03 | 1d |  |  |  | start no earlier than 2018-09-03 | 완료 | 100% | 완료 | 미지연 |
| 17 | 1.1.1.14 | 주간업무보고 14 | manual | 1d | 2018-09-10 A | 2018-09-10 A | 100% |  | 2018-09-10 | 2018-09-10 | 1d |  |  |  | start no earlier than 2018-09-10 | 완료 | 100% | 완료 | 미지연 |
| 18 | 1.1.1.15 | 주간업무보고 15 | manual | 1d | 2018-09-17 A | 2018-09-17 A | 100% |  | 2018-09-17 | 2018-09-17 | 1d |  |  |  | start no earlier than 2018-09-17 | 완료 | 100% | 완료 | 미지연 |
| 19 | 1.1.1.16 | 주간업무보고 16 | manual | 1d | 2018-09-28 A | 2018-09-28 A | 100% |  | 2018-09-28 | 2018-09-28 | 1d |  |  |  | start no earlier than 2018-09-24 | 완료 | 100% | 완료 | 미지연 |
| 20 | 1.1.1.17 | 주간업무보고 17 | manual | 1d | 2018-10-02 A | 2018-10-02 A | 100% |  | 2018-10-02 | 2018-10-02 | 1d |  |  |  | start no earlier than 2018-10-01 | 완료 | 100% | 완료 | 미지연 |
| 21 | 1.1.1.18 | 주간업무보고 18 | manual | 1d | 2018-10-10 A | 2018-10-10 A | 100% |  | 2018-10-10 | 2018-10-10 | 1d |  |  |  | start no earlier than 2018-10-08 | 완료 | 100% | 완료 | 미지연 |
| 22 | 1.1.1.19 | 주간업무보고 19 | manual | 1d | 2018-10-16 A | 2018-10-16 A | 100% |  | 2018-10-16 | 2018-10-16 | 1d |  |  |  | start no earlier than 2018-10-15 | 완료 | 100% | 완료 | 미지연 |
| 23 | 1.1.1.20 | 주간업무보고 20 | manual | 1d | 2018-10-24 A | 2018-10-24 A | 100% |  | 2018-10-24 | 2018-10-24 | 1d |  |  |  | start no earlier than 2018-10-22 | 완료 | 100% | 완료 | 미지연 |
| 24 | 1.1.1.21 | 주간업무보고 21 | manual | 1d | 2018-10-30 A | 2018-10-30 A | 100% |  | 2018-10-30 | 2018-10-30 | 1d |  |  |  | start no earlier than 2018-10-29 | 완료 | 100% | 완료 | 미지연 |
| 25 | 1.1.1.22 | 주간업무보고 22 | manual | 1d | 2018-11-06 A | 2018-11-06 A | 100% |  | 2018-11-06 | 2018-11-06 | 1d |  |  |  | start no earlier than 2018-11-05 | 완료 | 100% | 완료 | 미지연 |
| 26 | 1.1.1.23 | 주간업무보고 23 | manual | 1d | 2018-11-13 A | 2018-11-13 A | 100% |  | 2018-11-13 | 2018-11-13 | 1d |  |  |  | start no earlier than 2018-11-12 | 완료 | 100% | 완료 | 미지연 |
| 27 | 1.1.1.24 | 주간업무보고 24 | manual | 1d | 2018-11-20 A | 2018-11-20 A | 100% |  | 2018-11-20 | 2018-11-20 | 1d |  |  |  | start no earlier than 2018-11-19 | 완료 | 100% | 완료 | 미지연 |
| 28 | 1.1.1.25 | 주간업무보고 25 | manual | 1d | 2018-11-26 | 2018-11-26 |  |  | 2018-11-26 | 2018-11-26 | 1d |  |  |  | start no earlier than 2018-11-26 | 이후작업 | 0% | 이후작업 | 미지연 |

| ID | WBS | Task | Type | Duration | Start | Finish | Complete | Remaining | Baseline start | Baseline finish | Baseline duration | Baseline 1 start | Baseline 1 finish | Total slack | Constraint | 시작 일자 | 계획완료율 | 진행상황 | 완료기순지연일수 |
| --- | --- | --- | --- | --- | --- | --- | --- | --- | --- | --- | --- | --- | --- | --- | --- | --- | --- | --- | --- |
| 29 | 1.1.2 | **월간업무보고** |  | 111d | 2018-06-26 A | 2018-11-27 | 83% | 18.5d | 2018-06-26 | 2018-11-27 | 111d |  |  | 0d |  | 양호 | 83% | 양호 |  |
| 30 | 1.1.2.1 | 월간업무보고 1 | manual | 1d | 2018-06-26 A | 2018-06-26 A | 100% |  | 2018-06-26 | 2018-06-26 | 1d |  |  |  | start no earlier than 2018-06-26 | 완료 | 100% | 완료 | 미지연 |
| 31 | 1.1.2.2 | 월간업무보고 2 | manual | 1d | 2018-07-25 A | 2018-07-25 A | 100% |  | 2018-07-25 | 2018-07-25 | 1d |  |  |  | start no earlier than 2018-07-31 | 완료 | 100% | 완료 | 미지연 |
| 32 | 1.1.2.3 | 월간업무보고 3 | manual | 1d | 2018-09-03 A | 2018-09-03 A | 100% |  | 2018-09-03 | 2018-09-03 | 1d |  |  |  | start no earlier than 2018-08-28 | 완료 | 100% | 완료 | 미지연 |
| 33 | 1.1.2.4 | 월간업무보고 4 | manual | 1d | 2018-09-17 A | 2018-09-17 A | 100% |  | 2018-09-17 | 2018-09-17 | 1d |  |  |  | start no earlier than 2018-09-25 | 완료 | 100% | 완료 | 미지연 |
| 34 | 1.1.2.5 | 월간업무보고 5 | manual | 1d | 2018-10-30 A | 2018-10-30 A | 100% |  | 2018-10-30 | 2018-10-30 | 1d |  |  |  | start no earlier than 2018-10-30 | 완료 | 100% | 완료 | 미지연 |
| 35 | 1.1.2.6 | 월간업무보고 6 | manual | 1d | 2018-11-27 | 2018-11-27 |  |  | 2018-11-27 | 2018-11-27 | 1d |  |  |  | start no earlier than 2018-11-27 | 이후작업 | 0% | 이후작업 | 미지연 |
| 36 | 1.1.3 | **교육** |  | 110d? | 2018-07-02 A | 2018-11-30 | 38% | 68.75d? | 2018-07-02 | 2018-11-30 | 110d? | 2017-05-15 | 2017-10-27 | 0d |  | 지연 | 68% | 지연 | 미지연 |
| 37 | 1.1.3.1 | 사업설명 교육 | manual | 1d | 2018-07-02 A | 2018-07-02 A | 100% |  | 2018-07-02 | 2018-07-02 | 1d | 2017-05-15 | 2017-05-15 |  |  | 완료 | 100% | 완료 | 미지연 |
| 38 | 1.1.3.2 | 품질관리 교육 | manual | 1d | 2018-07-02 A | 2018-07-02 A | 100% |  | 2018-07-02 | 2018-07-02 | 1d | 2017-05-15 | 2017-05-15 |  |  | 완료 | 100% | 완료 | 미지연 |
| 39 | 1.1.3.3 | 보안교육(소프트웨어 개발 보안) | manual | 1d? | 2018-07-27 A | 2018-07-27 A | 100% |  | 2018-07-27 | 2018-07-27 | 1d? | 2017-06-29 | 2017-06-29 |  |  | 완료 | 100% | 완료 | 미지연 |
| 40 | 1.1.3.4 | 보안교육(개인정보 보호) | manual | 1d | 2018-08-31 A | 2018-08-31 A | 100% |  | 2018-08-31 | 2018-08-31 | 1d | 2017-07-28 | 2017-07-28 |  |  | 완료 | 100% | 완료 | 미지연 |
| 41 | 1.1.3.5 | 보안교육(공공기관 개인 정보 관리) | manual | 1d | 2018-10-05 A | 2018-10-05 A | 100% |  | 2018-10-05 | 2018-10-05 | 1d | 2017-08-25 | 2017-08-25 |  |  | 완료 | 100% | 완료 | 미지연 |
| 42 | 1.1.3.6 | 보안교육(스스로 지키는 개인정보 보호) | manual | 1d | 2018-11-08 A | 2018-11-08 A | 100% |  | 2018-11-08 | 2018-11-08 | 1d | 2017-09-29 | 2017-09-29 |  |  | 완료 | 100% | 완료 | 미지연 |
| 43 | 1.1.3.7 | 사용자 교육 | manual | 10d | 2018-11-19 | 2018-11-30 |  |  | 2018-11-19 | 2018-11-30 | 10d | 2017-10-27 | 2017-10-27 |  |  | 지연 | 50% | 지연 | 미지연 |
| 44 | 1.1.4 | **테스트** |  | 102d | 2018-07-05 A | 2018-11-23 | 89% | 11.33d | 2018-07-05 | 2018-11-23 | 102d | 2017-10-30 | 2017-11-30 | 5d |  | 지연 | 100% | 지연 | 미지연 |
| 45 | 1.1.4.1 | 단위테스트 시나리오 작성 |  | 25d | 2018-07-05 A | 2018-08-10 A | 100% |  | 2018-07-05 | 2018-08-10 | 25d | 2017-10-30 | 2017-11-10 |  | finish no earlier than 2018-07-13 | 완료 | 100% | 완료 | 미지연 |
| 46 | 1.1.4.2 | 통합테스트 시나리오 작성 |  | 5d | 2018-11-12 A | 2018-11-16 A | 100% |  | 2018-11-12 | 2018-11-16 | 5d | 2017-10-30 | 2017-11-10 |  | finish no earlier than 2018-07-20 | 완료 | 100% | 완료 | 미지연 |
| 47 | 1.1.4.3 | 성능테스트 |  | 5d | 2018-11-12 A | 2018-11-16 A | 100% |  | 2018-11-12 | 2018-11-16 | 5d | 2017-10-30 | 2017-11-10 |  | finish no earlier than 2018-11-02 | 완료 | 100% | 완료 | 미지연 |
| 48 | 1.1.4.4 | 웹접근성 검사 |  | 5d | 2018-11-12 A | 2018-11-16 A | 100% |  | 2018-11-12 | 2018-11-16 | 5d |  |  |  | finish no earlier than 2018-11-02 | 완료 | 100% | 완료 | 미지연 |
| 49 | 1.1.4.5 | 인수인계테스트 |  | 5d | 2018-11-19 | 2018-11-23 |  |  | 2018-11-19 | 2018-11-23 | 5d | 2017-11-13 | 2017-11-30 | 5d | finish no earlier than 2018-11-23 | 지연 | 100% | 지연 | 1일 지연 |
| 50 | 1.1.5 | **품질보증 활동** |  | 100d | 2018-07-02 A | 2018-11-16 A | 100% |  | 2018-07-02 | 2018-11-16 | 100d |  |  |  |  | 완료 | 100% | 완료 | 미지연 |
| 51 | 1.1.5.1 | 분석단계 품질 관리 활동 | manual | 5d | 2018-07-02 A | 2018-07-06 A | 100% |  | 2018-07-02 | 2018-07-06 | 5d |  |  |  |  | 완료 | 100% | 완료 | 미지연 |
| 52 | 1.1.5.2 | 설계 단계 품질 관리 활동 | manual | 1d | 2018-07-26 A | 2018-07-26 A | 100% |  | 2018-07-26 | 2018-07-26 | 1d |  |  |  |  | 완료 | 100% | 완료 | 미지연 |
| 53 | 1.1.5.3 | 구현 단계 품질 관리 활동 | manual | 5d | 2018-11-12 A | 2018-11-16 A | 100% |  | 2018-11-12 | 2018-11-16 | 5d |  |  |  |  | 완료 | 100% | 완료 | 미지연 |

| ID | WBS | Task | Type | Duration | Start | Finish | Complete | Remaining | Actual start | Baseline start | Baseline finish | Baseline duration | Baseline 1 start | Baseline 1 finish | Total slack | 시작 일자 | 계획완료율 | 진행상황 | 완료기순지연일수 |
| --- | --- | --- | --- | --- | --- | --- | --- | --- | --- | --- | --- | --- | --- | --- | --- | --- | --- | --- | --- |
| 54 | 1.1.6 | **이관** |  | 13d | 2018-11-12 A | 2018-11-28 A | 100% |  |  | 2018-11-12 | 2018-11-28 | 13d |  |  |  | 완료 | 86% | 완료 | 미지연 |
| 55 | 1.1.6.1 | 데이터 이관 | manual | 13d | 2018-11-12 A | 2018-11-28 A | 100% |  |  | 2018-11-12 | 2018-11-28 | 13d |  |  |  | 완료 | 76% | 완료 | 미지연 |
| 56 | 1.1.6.2 | 시스템 전환 | manual | 10d | 2018-11-12 A | 2018-11-23 A | 100% |  |  | 2018-11-12 | 2018-11-23 | 10d |  |  |  | 완료 | 100% | 완료 | 미지연 |
| 57 | 1.1.7 | **감리** |  | 40d | 2018-09-17 A | 2018-11-09 A | 100% |  |  | 2018-09-17 | 2018-11-09 | 40d |  |  |  | 완료 | 100% | 완료 | 미지연 |
| 58 | 1.1.7.1 | 설계단계 감리 | manual | 5d | 2018-09-17 A | 2018-09-21 A | 100% |  |  | 2018-09-17 | 2018-09-21 | 5d |  |  |  | 완료 | 100% | 완료 | 미지연 |
| 59 | 1.1.7.2 | 최종 감리 | manual | 5d | 2018-11-05 A | 2018-11-09 A | 100% |  |  | 2018-11-05 | 2018-11-09 | 5d |  |  |  | 완료 | 100% | 완료 | 미지연 |
| 60 | 1.1.8 | **취약점 점검** |  | 14d | 2018-11-05 A | 2018-11-22 | 38% | 8.75d |  | 2018-11-05 | 2018-11-22 | 14d |  |  | 0d | 지연 | 100% | 지연 | 미지연 |
| 61 | 1.1.8.1 | 1차 취약점 점검 수행 | manual | 5d | 2018-11-12 A | 2018-11-16 A | 100% |  |  | 2018-11-12 | 2018-11-16 | 5d |  |  |  | 완료 | 100% | 완료 | 미지연 |
| 62 | 1.1.8.2 | 1차 취약점 보완 | manual | 5d | 2018-11-16 A | 2018-11-22 | 50% | 2.5d |  | 2018-11-16 | 2018-11-22 | 5d |  |  |  | 지연 | 100% | 지연 | 2일 지연 |
| 63 | 1.1.8.3 | 2차 취약점 보완 결과 점검 | manual | 5d | 2018-11-05 | 2018-11-09 |  |  |  | 2018-11-05 | 2018-11-09 | 5d |  |  |  | 지연 | 100% | 지연 | 11일 지연 |
| 64 | 1.1.8.4 | 2차 취약점 보완 | manual | 5d | 2018-11-12 | 2018-11-16 |  |  |  | 2018-11-12 | 2018-11-16 | 5d |  |  |  | 지연 | 100% | 지연 | 6일 지연 |
| 65 | 1.2 | **사업관리시스템 구축** |  | 134d | 2018-05-29 | 2018-11-30 | 99% | 0.37d | 2018-06-18 | 2018-05-29 | 2018-11-30 | 134d | 2017-05-29 | 2017-10-27 |  | 양호 | 98% | 양호 | 미지연 |
| 66 | 1.2.1 | **분석** |  | 5d | 2018-07-02 A | 2018-07-06 A | 100% |  |  | 2018-07-02 | 2018-07-06 | 5d | 2017-05-29 | 2017-06-09 |  | 완료 | 100% | 완료 | 미지연 |
| 67 | 1.2.1.1 | 요구사항 분석 | manual | 5d | 2018-07-02 A | 2018-07-06 A | 100% |  |  | 2018-07-02 | 2018-07-06 | 5d | 2017-05-29 | 2017-06-09 |  | 완료 | 100% | 완료 | 미지연 |
| 68 | 1.2.2 | **설계** |  | 30d | 2018-06-18 A | 2018-07-27 A | 100% |  |  | 2018-06-18 | 2018-07-27 | 30d | 2017-07-03 | 2017-07-25 |  | 완료 | 100% | 완료 | 미지연 |
| 69 | 1.2.2.1 | 프로세스 설계 | manual | 9d | 2018-06-27 A | 2018-07-09 A | 100% |  |  | 2018-06-27 | 2018-07-09 | 9d | 2017-07-03 | 2017-07-07 |  | 완료 | 100% | 완료 | 미지연 |
| 70 | 1.2.2.2 | 화면 설계 | manual | 30d | 2018-06-18 A | 2018-07-27 A | 100% |  |  | 2018-06-18 | 2018-07-27 | 30d | 2017-07-12 | 2017-07-25 |  | 완료 | 100% | 완료 | 미지연 |
| 71 | 1.2.2.3 | 데이타베이스 설계 | manual | 17d | 2018-07-05 A | 2018-07-27 A | 100% |  |  | 2018-07-05 | 2018-07-27 | 17d | 2017-07-17 | 2017-07-21 |  | 완료 | 100% | 완료 | 미지연 |
| 72 | 1.2.2.4 | 공통코드설계 | manual | 20d | 2018-06-27 A | 2018-07-24 A | 100% |  |  | 2018-06-27 | 2018-07-24 | 20d |  |  |  | 완료 | 100% | 완료 | 미지연 |
| 73 | 1.2.2.5 | 프로그램 목록 | manual | 9d | 2018-06-27 A | 2018-07-09 A | 100% |  |  | 2018-06-27 | 2018-07-09 | 9d |  |  |  | 완료 | 100% | 완료 | 미지연 |
| 74 | 1.2.3 | **구현** |  | 104d? | 2018-06-26 A | 2018-11-18 A | 100% |  |  | 2018-06-26 | 2018-11-18 | 104d? | 2017-08-28 | 2017-09-22 |  | 완료 | 100% | 완료 | 미지연 |
| 75 | 1.2.3.1 | **개발환경구축** |  | 104d | 2018-06-26 A | 2018-11-18 A | 100% |  |  | 2018-06-26 | 2018-11-18 | 104d |  |  |  | 완료 | 100% | 완료 | 미지연 |
| 76 | 1.2.3.1.1 | 개발서버환경구축 | manual | 3d | 2018-06-26 A | 2018-06-28 A | 100% |  |  | 2018-06-26 | 2018-06-28 | 3d |  |  |  | 완료 | 100% | 완료 | 미지연 |
| 77 | 1.2.3.1.2 | 프레임워크 구성 | manual | 12d | 2018-06-29 A | 2018-07-16 A | 100% |  |  | 2018-06-29 | 2018-07-16 | 12d |  |  |  | 완료 | 100% | 완료 | 미지연 |

| ID | WBS | Task | Type | Duration | Start | Finish | Complete | Baseline start | Baseline finish | Baseline duration | Baseline 1 start | Baseline 1 finish | 시작 일자 | 계획완료율 | 진행상황 | 완료기순지연일수 |
| --- | --- | --- | --- | --- | --- | --- | --- | --- | --- | --- | --- | --- | --- | --- | --- | --- |
| 78 | 1.2.3.1.3 | **공통** |  | 90d | 2018-07-16 A | 2018-11-18 A | 100% | 2018-07-16 | 2018-11-18 | 90d |  |  | 완료 | 100% | 완료 | 미지연 |
| 79 | 1.2.3.1.3.1 | 공통 드랍박스 | manual | 1d | 2018-07-16 A | 2018-07-16 A | 100% | 2018-07-16 | 2018-07-16 | 1d |  |  | 완료 | 100% | 완료 | 미지연 |
| 80 | 1.2.3.1.3.2 | 파입업로드 | manual | 2d | 2018-07-24 A | 2018-07-25 A | 100% | 2018-07-24 | 2018-07-25 | 2d |  |  | 완료 | 100% | 완료 | 미지연 |
| 81 | 1.2.3.1.3.3 | 파일다운로드 | manual | 2d | 2018-07-24 A | 2018-07-25 A | 100% | 2018-07-24 | 2018-07-25 | 2d |  |  | 완료 | 100% | 완료 | 미지연 |
| 82 | 1.2.3.1.3.4 | 엑셀다운로드 | manual | 1d | 2018-08-27 A | 2018-08-27 A | 100% | 2018-08-27 | 2018-08-27 | 1d |  |  | 완료 | 100% | 완료 | 미지연 |
| 83 | 1.2.3.1.3.5 | 우편번호검색 팝업 | manual | 66d | 2018-08-20 A | 2018-11-18 A | 100% | 2018-08-20 | 2018-11-18 | 66d |  |  | 완료 | 100% | 완료 | 미지연 |
| 84 | 1.2.3.1.3.6 | 기관정보검색 팝업 | manual | 2d | 2018-08-04 A | 2018-08-06 A | 100% | 2018-08-04 | 2018-08-06 | 2d |  |  | 완료 | 100% | 완료 | 미지연 |
| 85 | 1.2.3.1.3.7 | 현황정보 추출 스케줄러 | manual | 34d | 2018-09-12 A | 2018-10-29 A | 100% | 2018-09-12 | 2018-10-29 | 34d |  |  | 완료 | 100% | 완료 | 미지연 |
| 86 | 1.2.3.2 | **메인** |  | 13d | 2018-07-16 A | 2018-08-01 A | 100% | 2018-07-16 | 2018-08-01 | 13d |  |  | 완료 | 100% | 완료 | 미지연 |
| 87 | 1.2.3.2.1 | 로그인 | manual | 13d | 2018-07-16 A | 2018-08-01 A | 100% | 2018-07-16 | 2018-08-01 | 13d |  |  | 완료 | 100% | 완료 | 미지연 |
| 88 | 1.2.3.3 | **시스템관리** |  | 26d | 2018-07-16 A | 2018-08-20 A | 100% | 2018-07-16 | 2018-08-20 | 26d |  |  | 완료 | 100% | 완료 | 미지연 |
| 89 | 1.2.3.3.1 | 사용자관리 | manual | 10d | 2018-07-16 A | 2018-07-27 A | 100% | 2018-07-16 | 2018-07-27 | 10d |  |  | 완료 | 100% | 완료 | 미지연 |
| 90 | 1.2.3.3.2 | 접속정보 | manual | 4d | 2018-07-26 A | 2018-07-31 A | 100% | 2018-07-26 | 2018-07-31 | 4d |  |  | 완료 | 100% | 완료 | 미지연 |
| 91 | 1.2.3.3.3 | 공통코드 | manual | 6d | 2018-07-23 A | 2018-07-29 A | 100% | 2018-07-23 | 2018-07-29 | 6d |  |  | 완료 | 100% | 완료 | 미지연 |
| 92 | 1.2.3.3.4 | 기관관리 | manual | 1d | 2018-07-30 A | 2018-07-30 A | 100% | 2018-07-30 | 2018-07-30 | 1d |  |  | 완료 | 100% | 완료 | 미지연 |
| 93 | 1.2.3.3.5 | 로그관리 | manual | 11d | 2018-08-06 A | 2018-08-20 A | 100% | 2018-08-06 | 2018-08-20 | 11d |  |  | 완료 | 100% | 완료 | 미지연 |
| 94 | 1.2.3.4 | **과제관리** |  | 84d | 2018-07-16 A | 2018-11-08 A | 100% | 2018-07-16 | 2018-11-08 | 84d | 2017-08-28 | 2017-09-01 | 완료 | 100% | 완료 | 7일 지연 |
| 95 | 1.2.3.4.1 | 공고관리 | manual | 15d | 2018-07-16 A | 2018-08-03 A | 100% | 2018-07-16 | 2018-08-03 | 15d |  |  | 완료 | 100% | 완료 | 미지연 |
| 96 | 1.2.3.4.2 | 과제관리 | manual | 11d | 2018-07-23 A | 2018-08-06 A | 100% | 2018-07-23 | 2018-08-06 | 11d | 2017-08-28 | 2017-09-01 | 완료 | 100% | 완료 | 미지연 |
| 97 | 1.2.3.4.3 | 과제등록 | manual | 45d | 2018-08-07 A | 2018-10-08 A | 100% | 2018-08-07 | 2018-10-08 | 45d | 2017-09-11 | 2017-09-15 | 완료 | 100% | 완료 | 미지연 |
| 98 | 1.2.3.4.4 | 과제엑셀 다운로드 | manual | 30d | 2018-09-28 A | 2018-11-08 A | 100% | 2018-09-28 | 2018-11-08 | 30d |  |  | 완료 | 100% | 완료 | 미지연 |
| 99 | 1.2.3.5 | **평가관리** |  | 39d | 2018-08-21 A | 2018-10-13 A | 100% | 2018-08-21 | 2018-10-13 | 39d | 2017-09-11 | 2017-09-15 | 완료 | 100% | 완료 | 7일 지연 |
| 100 | 1.2.3.5.1 | 평가정보 | manual | 40d | 2018-08-21 A | 2018-10-13 A | 100% | 2018-08-21 | 2018-10-13 | 40d | 2017-09-04 | 2017-09-08 | 완료 | 100% | 완료 | 미지연 |
| 101 | 1.2.3.5.2 | 보고서관리 | manual | 36d | 2018-08-27 A | 2018-10-13 A | 100% | 2018-08-27 | 2018-10-13 | 36d | 2017-09-04 | 2017-09-08 | 완료 | 100% | 완료 | 미지연 |

| ID | WBS | Task | Type | Duration | Start | Finish | Complete | Remaining | Baseline start | Baseline finish | Baseline duration | Baseline 1 start | Baseline 1 finish | Total slack | 시작 일자 | 계획완료율 | 진행상황 | 완료기순지연일수 |
| --- | --- | --- | --- | --- | --- | --- | --- | --- | --- | --- | --- | --- | --- | --- | --- | --- | --- | --- |
| 102 | 1.2.3.6 | **협약서관리** |  | 4d | 2018-08-27 A | 2018-09-01 A | 100% |  | 2018-08-27 | 2018-09-01 | 4d | 2017-09-18 | 2017-09-22 |  | 완료 | 100% | 완료 | 7일 지연 |
| 103 | 1.2.3.6.1 | 협약서등록/조회 | manual | 5d | 2018-08-27 A | 2018-09-01 A | 100% |  | 2018-08-27 | 2018-09-01 | 5d | 2017-09-18 | 2017-09-22 |  | 완료 | 100% | 완료 | 미지연 |
| 104 | 1.2.3.7 | **사후관리** |  | 11d | 2018-09-07 A | 2018-09-21 A | 100% |  | 2018-09-07 | 2018-09-21 | 11d | 2017-09-18 | 2017-09-22 |  | 완료 | 100% | 완료 | 7일 지연 |
| 105 | 1.2.3.7.1 | 납부계획서 | manual | 4d | 2018-09-07 A | 2018-09-12 A | 100% |  | 2018-09-07 | 2018-09-12 | 4d |  |  |  | 완료 | 100% | 완료 | 미지연 |
| 106 | 1.2.3.7.2 | 납부현황 | manual | 3d | 2018-09-19 A | 2018-09-21 A | 100% |  | 2018-09-19 | 2018-09-21 | 3d |  |  |  | 완료 | 100% | 완료 | 미지연 |
| 107 | 1.2.3.8 | **성과관리** |  | 23d | 2018-10-03 A | 2018-11-02 A | 100% |  | 2018-10-03 | 2018-11-02 | 23d |  |  |  | 완료 | 100% | 완료 | 미지연 |
| 108 | 1.2.3.8.1 | 논문정보 | manual | 14d | 2018-10-03 A | 2018-10-22 A | 100% |  | 2018-10-03 | 2018-10-22 | 14d |  |  |  | 완료 | 100% | 완료 | 미지연 |
| 109 | 1.2.3.8.2 | 학술정보 | manual | 12d | 2018-10-05 A | 2018-10-22 A | 100% |  | 2018-10-05 | 2018-10-22 | 12d |  |  |  | 완료 | 100% | 완료 | 미지연 |
| 110 | 1.2.3.8.3 | 특허정보 | manual | 17d | 2018-10-10 A | 2018-11-01 A | 100% |  | 2018-10-10 | 2018-11-01 | 17d |  |  |  | 완료 | 100% | 완료 | 미지연 |
| 111 | 1.2.3.8.4 | 사업화정보 | manual | 4d | 2018-10-30 A | 2018-11-02 A | 100% |  | 2018-10-30 | 2018-11-02 | 4d |  |  |  | 완료 | 100% | 완료 | 미지연 |
| 112 | 1.2.3.9 | **현황관리** |  | 14d? | 2018-10-21 A | 2018-11-08 A | 100% |  | 2018-10-21 | 2018-11-08 | 14d? |  |  |  | 완료 | 100% | 완료 | 미지연 |
| 113 | 1.2.3.9.1 | 평가위원현황 |  | 1d? | 2018-10-22 A | 2018-10-22 A | 100% |  | 2018-10-22 | 2018-10-22 | 1d? |  |  |  | 완료 | 100% | 완료 | 미지연 |
| 114 | 1.2.3.9.2 | 사업선정현황 | manual | 1d | 2018-10-22 A | 2018-10-22 A | 100% |  | 2018-10-22 | 2018-10-22 | 1d |  |  |  | 완료 | 100% | 완료 | 미지연 |
| 115 | 1.2.3.9.3 | 기관별지원금현황 | manual | 7d | 2018-10-21 A | 2018-10-29 A | 100% |  | 2018-10-21 | 2018-10-29 | 7d |  |  |  | 완료 | 100% | 완료 | 미지연 |
| 116 | 1.2.3.9.4 | 연도별 연구수당 | manual | 6d | 2018-10-22 A | 2018-10-29 A | 100% |  | 2018-10-22 | 2018-10-29 | 6d |  |  |  | 완료 | 100% | 완료 | 미지연 |
| 117 | 1.2.3.9.5 | 과제별성과현황 | manual | 14d | 2018-10-22 A | 2018-11-08 A | 100% |  | 2018-10-22 | 2018-11-08 | 14d |  |  |  | 완료 | 100% | 완료 | 미지연 |
| 118 | 1.2.3.9.6 | 공모별지원금현황 |  | 11d | 2018-10-25 A | 2018-11-08 A | 100% |  | 2018-10-25 | 2018-11-08 | 11d |  |  |  | 완료 | 100% | 완료 | 미지연 |
| 119 | 1.2.3.9.7 | 과제별지원현황 |  | 11d | 2018-10-25 A | 2018-11-08 A | 100% |  | 2018-10-25 | 2018-11-08 | 11d |  |  |  | 완료 | 100% | 완료 | 미지연 |
| 120 | 1.2.3.9.8 | 사업별지원현황 |  | 11d | 2018-10-25 A | 2018-11-08 A | 100% |  | 2018-10-25 | 2018-11-08 | 11d |  |  |  | 완료 | 100% | 완료 | 미지연 |
| 121 | 1.2.3.9.9 | 신규과제현황 |  | 11d | 2018-10-25 A | 2018-11-08 A | 100% |  | 2018-10-25 | 2018-11-08 | 11d |  |  |  | 완료 | 100% | 완료 | 미지연 |
| 122 | 1.2.3.10 | **데이터이관 및 정재** |  | 80d | 2018-07-23 A | 2018-11-09 A | 100% |  | 2018-07-23 | 2018-11-09 | 80d |  |  |  | 완료 | 100% | 완료 | 미지연 |
| 123 | 1.2.3.10.1 | 이전 과제정보 엑셀정리 | manual | 80d | 2018-07-23 A | 2018-11-09 A | 100% |  | 2018-07-23 | 2018-11-09 | 80d |  |  |  | 완료 | 100% | 완료 | 미지연 |
| 124 | 1.2.3.10.2 | 이전 과제정보 이관 및 정제 | manual | 31d | 2018-09-30 A | 2018-11-09 A | 100% |  | 2018-09-30 | 2018-11-09 | 31d |  |  |  | 완료 | 100% | 완료 | 미지연 |
| 125 | 1.2.4 | **테스트** |  | 15d | 2018-11-16 A | 2018-12-06 | 90% | 1.5d | 2018-11-16 | 2018-12-06 | 15d | 2017-09-25 | 2017-10-27 | 0d | 양호 | 40% | 양호 | 미지연 |
| 126 | 1.2.4.1 | 통합 테스트 | manual | 15d | 2018-11-16 A | 2018-12-06 | 90% | 1.5d | 2018-11-16 | 2018-12-06 | 15d | 2017-09-25 | 2017-10-27 |  | 양호 | 40% | 양호 | 미지연 |

| ID | WBS | Task | Type | Duration | Start | Finish | Predecessors | Complete | Remaining | Baseline start | Baseline finish | Baseline duration | Baseline 1 start | Baseline 1 finish | Total slack | Constraint | 시작 일자 | 계획완료율 | 진행상황 | 완료기순지연일수 |
| --- | --- | --- | --- | --- | --- | --- | --- | --- | --- | --- | --- | --- | --- | --- | --- | --- | --- | --- | --- | --- |
| 127 | 1.2.5 | **전개** |  | 4d | 2018-11-16 A | 2018-11-21 |  | 90% | 0.4d | 2018-11-16 | 2018-11-21 | 4d |  |  | 0d |  | 지연 | 100% | 지연 | 미지연 |
| 128 | 1.2.5.1 | 운영서버 프로그램설치 | manual | 4d | 2018-11-16 A | 2018-11-21 |  | 90% | 0.4d | 2018-11-16 | 2018-11-21 | 4d |  |  |  |  | 지연 | 100% | 지연 | 3일 지연 |
| 129 | 1.3 | **성능평가 기능 개선** |  | 129d | 2018-05-29 A | 2018-11-23 |  | 99% | 1.73d | 2018-05-29 | 2018-11-16 | 124d | 2017-05-25 | 2017-10-27 | 5d |  | 지연 | 100% | 지연 | 미지연 |
| 130 | 1.3.1 | **분석** |  | 29d | 2018-05-29 A | 2018-07-06 A |  | 100% |  | 2018-05-29 | 2018-07-06 | 29d | 2017-05-29 | 2017-06-09 |  |  | 완료 | 100% | 완료 | 미지연 |
| 131 | 1.3.1.1 | 요구사항 분석 |  | 29d | 2018-05-29 A | 2018-07-06 A |  | 100% |  | 2018-05-29 | 2018-07-06 | 29d | 2017-05-29 | 2017-06-09 |  |  | 완료 | 100% | 완료 | 미지연 |
| 132 | 1.3.2 | **설계** |  | 20d | 2018-06-25 A | 2018-07-20 A |  | 100% |  | 2018-06-25 | 2018-07-20 | 20d | 2017-07-03 | 2017-07-25 |  |  | 완료 | 100% | 완료 | 미지연 |
| 133 | 1.3.2.1 | 프로세스 설계 |  | 5d | 2018-07-16 A | 2018-07-20 A |  | 100% |  | 2018-07-16 | 2018-07-20 | 5d | 2017-07-03 | 2017-07-07 |  |  | 완료 | 100% | 완료 | 미지연 |
| 134 | 1.3.2.2 | 화면 설계 |  | 9d | 2018-06-25 A | 2018-07-05 A |  | 100% |  | 2018-06-25 | 2018-07-05 | 9d | 2017-07-12 | 2017-07-25 |  |  | 완료 | 100% | 완료 | 미지연 |
| 135 | 1.3.2.3 | 데이타베이스 설계 |  | 5d | 2018-07-16 A | 2018-07-20 A |  | 100% |  | 2018-07-16 | 2018-07-20 | 5d | 2017-07-17 | 2017-07-21 |  |  | 완료 | 100% | 완료 | 미지연 |
| 136 | 1.3.3 | **구현** |  | 105d | 2018-07-02 A | 2018-11-23 |  | 98% | 2.08d | 2018-07-02 | 2018-11-09 | 95d | 2017-08-28 | 2017-09-22 | 5d |  | 지연 | 100% | 지연 | 미지연 |
| 137 | 1.3.3.1 | **성능평가 도구 기능 개선** |  | 69d | 2018-07-02 A | 2018-10-04 A |  | 100% |  | 2018-07-02 | 2018-10-04 | 69d | 2017-08-28 | 2017-09-01 |  |  | 완료 | 100% | 완료 | 미지연 |
| 138 | 1.3.3.1.1 | 신청모듈 다운로드 및 경로 자동 설정 (필터링도구) |  | 10d | 2018-07-02 A | 2018-07-13 A |  | 100% |  | 2018-07-02 | 2018-07-13 | 10d | 2017-09-11 | 2017-09-15 |  |  | 완료 | 100% | 완료 | 미지연 |
| 139 | 1.3.3.1.2 | 신청듈 다운로드 및 경로 자동 설정 (포렌식도구) |  | 5d | 2018-07-18 A | 2018-07-24 A |  | 100% |  | 2018-07-18 | 2018-07-24 | 5d | 2017-09-11 | 2017-09-15 |  |  | 완료 | 100% | 완료 | 미지연 |
| 140 | 1.3.3.1.3 | 평가 스크립트 생성 |  | 15d | 2018-07-23 A | 2018-08-10 A |  | 100% |  | 2018-07-23 | 2018-08-10 | 15d | 2017-09-18 | 2017-09-22 |  | finish no earlier than 2018-08-03 | 완료 | 100% | 완료 | 미지연 |
| 141 | 1.3.3.1.4 | 로그 분석 및 등록 |  | 32d | 2018-08-06 A | 2018-09-18 A |  | 100% |  | 2018-08-06 | 2018-09-18 | 32d | 2017-09-18 | 2017-09-22 |  | start no earlier than 2018-08-06 | 완료 | 100% | 완료 | 미지연 |
| 142 | 1.3.3.1.5 | 성능평가 로그 모니터링 |  | 21d | 2018-09-06 A | 2018-10-04 A |  | 100% |  | 2018-09-06 | 2018-10-04 | 21d | 2017-09-11 | 2017-09-15 |  | start no earlier than 2018-08-20 | 완료 | 100% | 완료 | 미지연 |
| 143 | 1.3.3.2 | **관리시스템 기능 개선** |  | 45d | 2018-09-10 A | 2018-11-09 A |  | 100% |  | 2018-09-10 | 2018-11-09 | 45d | 2017-09-11 | 2017-09-15 |  |  | 완료 | 100% | 완료 | 미지연 |
| 144 | 1.3.3.2.1 | 성능평가 신청 정보 |  | 15d | 2018-09-10 A | 2018-09-28 A |  | 100% |  | 2018-09-10 | 2018-09-28 | 15d | 2017-09-04 | 2017-09-08 |  | start no earlier than 2018-09-10 | 완료 | 100% | 완료 | 미지연 |
| 145 | 1.3.3.2.2 | 콘텐츠 경로 설정 |  | 13d | 2018-10-01 A | 2018-10-17 A |  | 100% |  | 2018-10-01 | 2018-10-17 | 13d | 2017-08-28 | 2017-09-01 |  | finish no earlier than 2018-09-14 | 완료 | 100% | 완료 | 미지연 |
| 146 | 1.3.3.2.3 | 대시보드 |  | 8d | 2018-10-08 A | 2018-10-26 A | 145 | 100% |  | 2018-10-08 | 2018-10-26 | 8d | 2017-09-11 | 2017-09-15 |  |  | 완료 | 100% | 완료 | 미지연 |
| 147 | 1.3.3.2.4 | 성능평가 통계 |  | 2d | 2018-11-08 A | 2018-11-09 A | 146 | 100% |  | 2018-11-08 | 2018-11-09 | 2d | 2017-09-11 | 2017-09-15 |  | finish no earlier than 2018-10-26 | 완료 | 100% | 완료 | 미지연 |
| 148 | 1.3.3.2.5 | 성능평가 통합 모니터링 | milestone | 0d | 2018-11-05 A | 2018-11-08 A | 147 | 100% |  | 2018-11-05 | 2018-11-08 | 0d | 2017-09-04 | 2017-09-08 |  |  | 완료 | 100% | 완료 | 미지연 |
| 149 | 1.3.3.3 | **업무포털 기능 개선** |  | 5d | 2018-11-19 A | 2018-11-23 |  | 50% | 2.5d | 2018-10-01 | 2018-10-05 | 5d | 2017-09-18 | 2017-09-22 | 5d |  | 지연 | 100% | 지연 | 미지연 |
| 150 | 1.3.3.3.1 | 포렌식 성능평가 신청 |  | 5d | 2018-11-19 A | 2018-11-23 |  | 50% | 2.5d | 2018-10-01 | 2018-10-05 | 5d | 2017-09-18 | 2017-09-22 | 5d | start no earlier than 2018-10-01 | 지연 | 100% | 지연 | 36일 지연 |

| ID | WBS | Task | Type | Duration | Start | Finish | Complete | Baseline start | Baseline finish | Baseline duration | Baseline 1 start | Baseline 1 finish | Constraint | 시작 일자 | 계획완료율 | 진행상황 | 완료기순지연일수 |
| --- | --- | --- | --- | --- | --- | --- | --- | --- | --- | --- | --- | --- | --- | --- | --- | --- | --- |
| 151 | 1.3.4 | **테스트** |  | 12d | 2018-11-08 A | 2018-11-23 A | 100% | 2018-11-08 | 2018-11-16 | 7d | 2017-09-25 | 2017-10-27 |  | 완료 | 100% | 완료 | 미지연 |
| 152 | 1.3.4.1 | 통합 테스트 |  | 12d | 2018-11-08 A | 2018-11-23 A | 100% | 2018-11-08 | 2018-11-16 | 7d | 2017-09-25 | 2017-10-27 | finish no earlier than 2018-11-09 | 완료 | 100% | 완료 | 미지연 |
| 153 | 1.4 | **데이타셋 구축** |  | 95d | 2018-07-09 A | 2018-11-18 A | 100% | 2018-07-09 | 2018-11-18 | 95d | 2017-06-26 | 2017-10-13 |  | 완료 | 100% | 완료 | 미지연 |
| 154 | 1.4.1 | **비디오 데이타셋 구축** |  | 65d | 2018-07-10 A | 2018-10-08 A | 100% | 2018-07-10 | 2018-10-08 | 65d | 2017-06-26 | 2017-10-13 |  | 완료 | 100% | 완료 | 미지연 |
| 155 | 1.4.1.1 | **비디오 원본 데이타셋 구축** |  | 12d | 2018-07-10 A | 2018-07-25 A | 100% | 2018-07-10 | 2018-07-25 | 12d | 2017-06-26 | 2017-06-30 |  | 완료 | 100% | 완료 | 미지연 |
| 156 | 1.4.1.1.1 | 원본 콘텐츠 확보 | manual | 9d | 2018-07-10 A | 2018-07-20 A | 100% | 2018-07-10 | 2018-07-20 | 9d | 2017-06-26 | 2017-06-30 |  | 완료 | 100% | 완료 | 미지연 |
| 157 | 1.4.1.1.2 | 원본 데이타셋 검증 | manual | 6d | 2018-07-13 A | 2018-07-20 A | 100% | 2018-07-13 | 2018-07-20 | 6d | 2017-06-29 | 2017-06-30 |  | 완료 | 100% | 완료 | 미지연 |
| 158 | 1.4.1.1.3 | 3분 원본 및 DivX 변환 | manual | 5d | 2018-07-16 A | 2018-07-20 A | 100% | 2018-07-16 | 2018-07-20 | 5d | 2017-06-29 | 2017-06-30 |  | 완료 | 100% | 완료 | 미지연 |
| 159 | 1.4.1.1.4 | 원본 MP4 변환 | manual | 4d | 2018-07-20 A | 2018-07-25 A | 100% | 2018-07-20 | 2018-07-25 | 4d | 2017-09-25 | 2017-10-06 |  | 완료 | 100% | 완료 | 미지연 |
| 160 | 1.4.1.2 | **비디오 변형 데이타셋 구축** |  | 29d | 2018-07-16 A | 2018-08-23 A | 100% | 2018-07-16 | 2018-08-23 | 29d | 2017-07-03 | 2017-09-22 |  | 완료 | 100% | 완료 | 미지연 |
| 161 | 1.4.1.2.1 | 강인성 변형물 구축 | manual | 29d | 2018-07-16 A | 2018-08-23 A | 100% | 2018-07-16 | 2018-08-23 | 29d | 2017-07-03 | 2017-07-21 |  | 완료 | 100% | 완료 | 미지연 |
| 162 | 1.4.1.2.2 | 인식정보량 변형물 구축 | manual | 4d | 2018-08-20 A | 2018-08-23 A | 100% | 2018-08-20 | 2018-08-23 | 4d | 2017-08-14 | 2017-09-22 |  | 완료 | 100% | 완료 | 미지연 |
| 163 | 1.4.1.2.3 | 강인성 변형물 구축 (오디오제거) | manual | 21d | 2018-07-26 A | 2018-08-23 A | 100% | 2018-07-26 | 2018-08-23 | 21d | 2017-07-03 | 2017-07-21 |  | 완료 | 100% | 완료 | 미지연 |
| 164 | 1.4.1.3 | **모바일웹하드용 비디오 변형 데이타셋 구축** |  | 38d | 2018-08-16 A | 2018-10-08 A | 100% | 2018-08-16 | 2018-10-08 | 38d | 2017-09-25 | 2017-10-13 |  | 완료 | 100% | 완료 | 미지연 |
| 165 | 1.4.1.3.1 | 강인성 변형물 구축 | manual | 26d | 2018-08-24 A | 2018-09-28 A | 100% | 2018-08-24 | 2018-09-28 | 26d | 2017-09-25 | 2017-10-06 |  | 완료 | 100% | 완료 | 미지연 |
| 166 | 1.4.1.3.2 | 인식정보량 변형물 구축 | manual | 3d | 2018-08-16 A | 2018-08-20 A | 100% | 2018-08-16 | 2018-08-20 | 3d | 2017-10-09 | 2017-10-13 |  | 완료 | 100% | 완료 | 미지연 |
| 167 | 1.4.1.3.3 | 강인성 변형물 구축 (오디오제거) | manual | 32d | 2018-08-24 A | 2018-10-08 A | 100% | 2018-08-24 | 2018-10-08 | 32d | 2017-07-03 | 2017-07-21 |  | 완료 | 100% | 완료 | 미지연 |
| 168 | 1.4.2 | **오디오 데이타셋 구축** |  | 95d | 2018-07-09 A | 2018-11-18 A | 100% | 2018-07-09 | 2018-11-18 | 95d | 2017-06-26 | 2017-07-28 |  | 완료 | 100% | 완료 | 미지연 |
| 169 | 1.4.2.1 | **오디오 원본 데이타셋 구축** |  | 5d | 2018-07-09 A | 2018-07-13 A | 100% | 2018-07-09 | 2018-07-13 | 5d | 2017-06-26 | 2017-06-30 |  | 완료 | 100% | 완료 | 미지연 |
| 170 | 1.4.2.1.1 | 원본 콘텐츠 확보 | manual | 5d | 2018-07-09 A | 2018-07-13 A | 100% | 2018-07-09 | 2018-07-13 | 5d | 2017-06-26 | 2017-06-30 |  | 완료 | 100% | 완료 | 미지연 |
| 171 | 1.4.2.1.2 | 원본 데이타셋 검증 | manual | 1d | 2018-07-13 A | 2018-07-13 A | 100% | 2018-07-13 | 2018-07-13 | 1d | 2017-06-29 | 2017-06-30 |  | 완료 | 100% | 완료 | 미지연 |
| 172 | 1.4.2.2 | **오디오 변형 데이타셋 구축** |  | 90d | 2018-07-16 A | 2018-11-18 A | 100% | 2018-07-16 | 2018-11-18 | 90d | 2017-07-03 | 2017-07-28 |  | 완료 | 100% | 완료 | 미지연 |
| 173 | 1.4.2.2.1 | 강인성 변형물 구축 | manual | 91d | 2018-07-16 A | 2018-11-18 A | 100% | 2018-07-16 | 2018-11-18 | 91d | 2017-07-03 | 2017-07-14 |  | 완료 | 100% | 완료 | 미지연 |
| 174 | 1.4.2.2.2 | 인식정보량 변형물 구축 | manual | 3d | 2018-07-23 A | 2018-07-25 A | 100% | 2018-07-23 | 2018-07-25 | 3d | 2017-07-17 | 2017-07-28 |  | 완료 | 100% | 완료 | 미지연 |
